# 企业就业失业数据采集系统_项目计划&WBS

Schedule from MS Project, 2020-02-28 to 2020-04-13, status date 2020-04-12, costs in ¥, A marks actual dates.

## Calendars

- 标准: Mon-Fri 08:00-12:00, 13:00-17:00; Sat-Sun off. Exceptions (off unless hours are given): 2020-04-11 to 2020-04-12 09:00-12:00, 13:00-18:00 (项目即将完工，手册编写剩下一小部分，周末完成).

## Resources

| Resource | Rate | Cost per use |
| --- | --- | --- |
| 侯国玉 | 100 | 100 |
| 许昊龙 | 100 | 100 |
| 梁志彬 | 100 | 100 |
| 张嘉文 | 100 | 100 |
| 韩金龙 | 100 | 100 |

## Schedule

| ID | WBS | Task | Type | Duration | Start | Finish | Predecessors | Complete | Actual finish | Baseline start | Baseline finish | Baseline duration | Baseline 1 start | Baseline 1 finish | Constraint | Resources | Work | Actual work | Cost | Baseline cost | Actual cost |
| --- | --- | --- | --- | --- | --- | --- | --- | --- | --- | --- | --- | --- | --- | --- | --- | --- | --- | --- | --- | --- | --- |
| 1 | 1 | **企业就业失业数据采集系统** |  | 34d | 2020-02-28 A | 2020-04-13 |  | 100% | 2020-04-12 | 2020-02-28 | 2020-04-10 | 31d | 2020-02-28 | 2020-04-12 |  |  | 472h | 472h | 50,200 | 41,300 | 50,200 |
| 2 | 1.1 | **合同阶段** |  | 2d | 2020-02-28 A | 2020-03-02 A |  | 100% |  | 2020-02-28 | 2020-03-02 | 2d | 2020-02-28 | 2020-03-02 |  |  | 16h | 16h | 1,700 | 1,700 | 1,700 |
| 3 | 1.1.1 | 编写软件开发合同 | manual | 2d | 2020-02-28 A | 2020-03-02 A |  | 100% |  | 2020-02-28 | 2020-03-02 | 2d | 2020-02-28 | 2020-03-02 | start no earlier than 2020-02-28 | 梁志彬 | 16h | 16h | 1,700 | 1,700 | 1,700 |
| 4 | 1.2 | **计划阶段** |  | 3d | 2020-03-03 A | 2020-03-05 A |  | 100% |  | 2020-03-03 | 2020-03-05 | 3d | 2020-03-03 | 2020-03-05 |  |  | 24h | 24h | 2,600 | 2,600 | 2,600 |
| 5 | 1.2.1 | 编写项目计划&WBS | manual | 2d | 2020-03-03 A | 2020-03-04 A |  | 100% |  | 2020-03-03 | 2020-03-04 | 2d | 2020-03-03 | 2020-03-04 | start no earlier than 2020-03-03 | 梁志彬 | 16h | 16h | 1,700 | 1,700 | 1,700 |
| 6 | 1.2.2 | 项目计划评审 | manual | 1d | 2020-03-05 A | 2020-03-05 A | 5 | 100% |  | 2020-03-05 | 2020-03-05 | 1d | 2020-03-05 | 2020-03-05 | start no earlier than 2020-03-05 | 梁志彬 | 8h | 8h | 900 | 900 | 900 |
| 7 | 1.3 | **需求阶段** |  | 6d | 2020-03-06 A | 2020-03-13 A |  | 100% |  | 2020-03-06 | 2020-03-13 | 6d | 2020-03-06 | 2020-03-13 |  |  | 80h | 80h | 8,700 | 10,300 | 8,700 |
| 8 | 1.3.1 | 需求调研 | manual | 2d | 2020-03-06 A | 2020-03-09 A |  | 100% |  | 2020-03-06 | 2020-03-09 | 2d | 2020-03-06 | 2020-03-09 | start no earlier than 2020-03-06 | 许昊龙 | 16h | 16h | 1,700 | 1,700 | 1,700 |
| 9 | 1.3.2 | 需求分析及模型设计 | manual | 2d | 2020-03-10 A | 2020-03-11 A | 8 | 100% |  | 2020-03-10 | 2020-03-12 | 3d | 2020-03-10 | 2020-03-12 | start no earlier than 2020-03-10 | 梁志彬 | 16h | 16h | 1,700 | 2,500 | 1,700 |
| 10 | 1.3.3 | 编写需求规格说明书 | manual | 2d | 2020-03-10 A | 2020-03-11 A | 8 | 100% |  | 2020-03-10 | 2020-03-12 | 3d | 2020-03-10 | 2020-03-12 | start no earlier than 2020-03-10 | 许昊龙 | 16h | 16h | 1,700 | 2,500 | 1,700 |
| 11 | 1.3.4 | 需求评审 | manual | 1d | 2020-03-13 A | 2020-03-13 A | 10 | 100% |  | 2020-03-13 | 2020-03-13 | 1d | 2020-03-13 | 2020-03-13 | start no earlier than 2020-03-13 | 梁志彬; 许昊龙; 侯国玉; 张嘉文 | 32h | 32h | 3,600 | 3,600 | 3,600 |
| 12 | 1.4 | **设计阶段** |  | 8d | 2020-03-16 A | 2020-03-25 |  | 100% | 2020-03-20 | 2020-03-16 | 2020-03-18 | 3d | 2020-03-16 | 2020-03-20 |  |  | 88h | 88h | 9,450 | 9,600 | 9,450 |
| 13 | 1.4.1 | 架构设计 | manual | 3d | 2020-03-16 A | 2020-03-18 A |  | 100% |  | 2020-03-16 | 2020-03-17 | 2d | 2020-03-16 | 2020-03-17 | start no earlier than 2020-03-16 | 侯国玉 | 24h | 24h | 2,500 | 1,700 | 2,500 |
| 14 | 1.4.2 | 数据库设计 | manual | 3d | 2020-03-16 A | 2020-03-18 A |  | 100% |  | 2020-03-16 | 2020-03-17 | 2d | 2020-03-16 | 2020-03-17 | start no earlier than 2020-03-16 | 张嘉文 | 24h | 24h | 2,500 | 1,700 | 2,500 |
| 15 | 1.4.3 | 编写概要设计说明书 | manual | 2d | 2020-03-19 A | 2020-03-20 A |  | 100% |  | 2020-03-16 | 2020-03-17 | 2d | 2020-03-18 | 2020-03-19 | start no earlier than 2020-03-18 | 梁志彬 [50%] | 8h | 8h | 850 | 1,700 | 850 |
| 16 | 1.4.4 | 编写数据字典 | manual | 1d | 2020-03-19 A | 2020-03-19 A |  | 100% |  | 2020-03-17 | 2020-03-17 | 1d | 2020-03-19 | 2020-03-19 | start no earlier than 2020-03-19 | 许昊龙 | 8h | 8h | 900 | 900 | 900 |
| 17 | 1.4.5 | 设计评审 | manual | 1d | 2020-03-20 A | 2020-03-20 A | 15 | 100% |  | 2020-03-18 | 2020-03-18 | 1d | 2020-03-20 | 2020-03-20 | start no earlier than 2020-03-20 | 梁志彬; 许昊龙; 侯国玉 [50%]; 张嘉文 [50%] | 24h | 24h | 2,700 | 3,600 | 2,700 |
| 18 | 1.5 | **编码阶段** |  | 7d | 2020-03-20 A | 2020-03-30 A |  | 100% |  | 2020-03-19 | 2020-03-27 | 7d | 2020-03-20 | 2020-03-30 |  |  | 76h | 76h | 8,250 | 5,400 | 8,250 |
| 19 | 1.5.1 | 数据采集接口编码 | manual | 1d | 2020-03-23 A | 2020-03-23 A |  | 100% |  | 2020-03-19 | 2020-03-19 | 1d | 2020-03-23 | 2020-03-23 | start no earlier than 2020-03-23 | 梁志彬 | 8h | 8h | 900 | 900 | 900 |
| 20 | 1.5.2 | 数据分析接口编码 | manual | 1d | 2020-03-23 A | 2020-03-23 A |  | 100% |  | 2020-03-19 | 2020-03-19 | 1d | 2020-03-23 | 2020-03-23 | start no earlier than 2020-03-23 | 许昊龙 | 8h | 8h | 900 | 900 | 900 |
| 21 | 1.5.3 | 数据鉴权接口编码 | manual | 1d | 2020-03-20 A | 2020-03-20 A |  | 100% |  | 2020-03-19 | 2020-03-19 | 1d | 2020-03-20 | 2020-03-20 | start no earlier than 2020-03-20 | 侯国玉 [50%] | 4h | 4h | 450 | 900 | 450 |
| 22 | 1.5.4 | 数据库处理模块编码 | manual | 1d | 2020-03-24 A | 2020-03-24 A |  | 100% |  | 2020-03-20 | 2020-03-20 | 1d | 2020-03-24 | 2020-03-24 | start no earlier than 2020-03-24 | 梁志彬 | 8h | 8h | 900 | 900 | 900 |
| 23 | 1.5.5 | 数据展示界面编码 | manual | 1d | 2020-03-24 A | 2020-03-24 A |  | 100% |  | 2020-03-20 | 2020-03-20 | 1d | 2020-03-24 | 2020-03-24 | start no earlier than 2020-03-24 | 许昊龙 | 8h | 8h | 900 | 900 | 900 |
| 24 | 1.5.6 | ……… | manual | 1d | 2020-03-24 A | 2020-03-24 A |  | 100% |  | 2020-03-20 | 2020-03-20 | 1d | 2020-03-24 | 2020-03-24 | start no earlier than 2020-03-24 | 侯国玉 | 8h | 8h | 900 | 900 | 900 |
| 25 | 1.5.7 | 手机报送模块编码 | manual | 4d | 2020-03-25 A | 2020-03-30 A |  | 100% |  |  |  |  | 2020-03-25 | 2020-03-30 |  | 梁志彬 | 32h | 32h | 3,300 |  | 3,300 |
| 26 | 1.5.8 | 系统调试 | manual | 1d | 2020-03-27 A | 2020-03-27 A |  | 100% |  | 2020-03-27 | 2020-03-27 | 1d | 2020-03-27 | 2020-03-28 | start no earlier than 2020-03-27 |  |  |  |  |  |  |

| ID | WBS | Task | Type | Duration | Start | Finish | Predecessors | Complete | Baseline start | Baseline finish | Baseline duration | Baseline 1 start | Baseline 1 finish | Constraint | Resources | Work | Actual work | Cost | Baseline cost | Actual cost |
| --- | --- | --- | --- | --- | --- | --- | --- | --- | --- | --- | --- | --- | --- | --- | --- | --- | --- | --- | --- | --- |
| 27 | 1.6 | **测试阶段** |  | 14d | 2020-03-19 A | 2020-04-07 A |  | 100% | 2020-03-19 | 2020-04-06 | 13d | 2020-03-19 | 2020-04-07 |  |  | 76h | 76h | 7,850 | 8,300 | 7,850 |
| 28 | 1.6.1 | 编写测试用例 | manual | 3d | 2020-03-19 A | 2020-03-23 A |  | 100% | 2020-03-19 | 2020-03-23 | 3d | 2020-03-19 | 2020-03-23 | start no earlier than 2020-03-19 | 张嘉文 [50%] | 12h | 12h | 1,250 | 2,500 | 1,250 |
| 29 | 1.6.2 | 系统测试 | manual | 7d | 2020-03-27 A | 2020-04-06 A | 28 | 100% | 2020-03-24 | 2020-03-31 | 6d | 2020-03-27 | 2020-04-07 | start no earlier than 2020-03-27 | 韩金龙 | 56h | 56h | 5,700 | 4,900 | 5,700 |
| 30 | 1.6.3 | 编写测试报告 | manual | 1d | 2020-04-07 A | 2020-04-07 A |  | 100% | 2020-04-06 | 2020-04-06 | 1d | 2020-04-07 | 2020-04-07 | start no earlier than 2020-04-07 | 许昊龙 | 8h | 8h | 900 | 900 | 900 |
| 31 | 1.7 | **发布实施阶段** |  | 22d | 2020-03-16 A | 2020-04-12 A |  | 100% | 2020-04-07 | 2020-04-10 | 4d | 2020-03-16 | 2020-04-12 |  |  | 112h | 112h | 11,650 | 3,400 | 11,650 |
| 32 | 1.7.1 | 编写用户操作说明书 | manual | 5d | 2020-04-01 A | 2020-04-07 A |  | 100% | 2020-04-07 | 2020-04-09 | 3d | 2020-04-01 | 2020-04-07 | start no earlier than 2020-04-01 | 侯国玉 | 40h | 40h | 4,100 | 2,500 | 4,100 |
| 33 | 1.7.2 | 编写安装部署手册 | manual | 5d | 2020-04-08 A | 2020-04-12 A |  | 100% | 2020-04-10 | 2020-04-10 | 1d | 2020-04-08 | 2020-04-12 | start no earlier than 2020-04-08 | 韩金龙 | 40h | 40h | 4,100 | 900 | 4,100 |
| 34 | 1.7.3 | **变更任务-增加手机报送功能** |  | 3d | 2020-03-16 A | 2020-03-18 A |  | 100% | 2020-02-28 | 2020-02-28 | 1d? | 2020-03-16 | 2020-03-18 |  |  | 32h | 32h | 3,450 |  | 3,450 |
| 35 | 1.7.3.1 | 修改项目计划计划 | manual | 1d | 2020-03-16 A | 2020-03-16 A |  | 100% |  |  |  | 2020-03-16 | 2020-03-16 |  | 许昊龙 | 8h | 8h | 900 |  | 900 |
| 36 | 1.7.3.2 | 修改原型设计 | manual | 2d | 2020-03-16 A | 2020-03-17 A |  | 100% |  |  |  | 2020-03-16 | 2020-03-17 |  | 梁志彬 [50%] | 8h | 8h | 850 |  | 850 |
| 37 | 1.7.3.3 | 修改需求规格说明书 | manual | 2d | 2020-03-17 A | 2020-03-18 A |  | 100% |  |  |  | 2020-03-17 | 2020-03-18 |  | 许昊龙 | 16h | 16h | 1,700 |  | 1,700 |
